# Simunovic_VillageChat

Schedule from ProjectLibre, 2020-11-24 to 2021-03-01.

## Calendars

- Standard: Mon-Fri 08:00-12:00, 13:00-17:00; Sat-Sun off.

## Resources

| Resource | Group | Rate |
| --- | --- | --- |
| Unassigned |  |  |
| Vodja izvajalcev |  | 18 |
| Direktor |  | 20 |
| Vodja uporabnikov |  | 18 |
| Vodja projekta | Vodje | 18 |
| Oglaševalec |  | 12 |
| Kadrovnik |  | 10 |
| Svetovalec za odnose z javnostjo |  | 12 |
| Tajnik |  | 10 |
| Vzdrževalec strojne opreme |  | 16 |
| Vodja oblikovalcev | Vodje | 16 |
| Vodja ravoja programske opreme | Vodje | 16 |
| Programer 1 |  | 12 |
| Programer 2 |  | 12 |
| Oblikovalec |  | 16 |
| Načrtovalec uporabniškega vmesnika | Načrtovalci | 16 |
| Tester |  | 12 |
| Načrtovalec podatkovne baze | Načrtovalci | 16 |
| Vodja delovnih skupin |  | 16 |
| Računovodja |  |  |
| Načrtovalec programa |  |  |

## Schedule

| ID | WBS | Task | Duration | Start | Finish | Predecessors | Complete | Baseline start | Baseline finish | Constraint | Resources |
| --- | --- | --- | --- | --- | --- | --- | --- | --- | --- | --- | --- |
| 1 | 1 | **Priprava projekta** | 8.25d? | 2020-11-24 | 2020-12-04 |  | 100% | 2020-11-24 | 2020-12-04 |  |  |
| 2 | 1.1 | Imenovanje direktorja projekta in projektnega vodje | 1d | 2020-11-24 | 2020-11-24 |  | 100% | 2020-11-24 | 2020-11-24 |  |  |
| 3 | 1.2 | Določitev skupine za vodenje projektov | 1d | 2020-11-25 | 2020-11-25 | 2 | 100% | 2020-11-25 | 2020-11-25 |  | Direktor |
| 4 | 1.3 | Imenovanje skupine za vodenje projektov | 0.25d | 2020-11-26 | 2020-11-26 | 3 | 100% | 2020-11-26 | 2020-11-26 |  | Vodja projekta |
| 5 | 1.4 | Priprava povzetka projekta | 3d | 2020-11-26 | 2020-12-01 | 4 | 100% | 2020-11-26 | 2020-12-01 |  | Vodja projekta |
| 7 | 1.5 | **Vzpostavitev projekta** | 3d? | 2020-12-01 | 2020-12-04 | 5 | 100% | 2020-12-01 | 2020-12-04 |  |  |
| 8 | 1.5.1 | Izdelava dnevnika tveganj | 1d? | 2020-12-01 | 2020-12-02 |  | 100% | 2020-12-01 | 2020-12-02 |  | Vodja projekta |
| 9 | 1.5.2 | Izdelava komunikacijskega plana | 1d? | 2020-12-01 | 2020-12-02 |  | 100% | 2020-12-01 | 2020-12-02 |  |  |
| 10 | 1.5.3 | Izdelava projektnega plana | 2d | 2020-12-02 | 2020-12-04 | 8 | 100% | 2020-12-02 | 2020-12-04 |  | Vodja projekta |
| 11 | 1.5.4 | Izdelava vzpostavitvenega dokumenta | 2d | 2020-12-01 | 2020-12-03 |  | 100% | 2020-12-01 | 2020-12-03 |  | Vodja delovnih skupin |
| 13 | 2 | **Nadzorovanje projekta** | 5.83d? | 2020-12-04 | 2020-12-14 | 7 | 100% | 2020-12-04 | 2020-12-14 |  |  |
| 14 | 2.1 | Odobritev delovnih paketov | 0.5d | 2020-12-04 | 2020-12-04 |  | 100% | 2020-12-04 | 2020-12-04 |  |  |
| 15 | 2.2 | Ocenjevanje napredka | 0.5d | 2020-12-04 | 2020-12-04 |  | 100% | 2020-12-04 | 2020-12-04 |  | Vodja projekta; Vodja uporabnikov |
| 16 | 2.3 | Zapis in pregled odprtih vprašanj | 0.5d | 2020-12-04 | 2020-12-04 |  | 100% | 2020-12-04 | 2020-12-04 |  | Vodja delovnih skupin; Vodja projekta |
| 17 | 2.4 | Odpravljanje odprtih vpranj | 2d | 2020-12-04 | 2020-12-08 | 15 | 100% | 2020-12-04 | 2020-12-08 |  | Vodja projekta |
| 18 | 2.5 | Izvedba korekcijskih akcij | 0.33d? | 2020-12-08 | 2020-12-09 | 17 | 100% | 2020-12-08 | 2020-12-09 |  | Vodja projekta; Vodja izvajalcev; Vodja delovnih skupin |
| 19 | 2.6 | Poročanje o napredku | 1d? | 2020-12-09 | 2020-12-10 | 18 | 100% | 2020-12-09 | 2020-12-10 |  |  |
| 20 | 2.7 | Pregled statusa faze | 1d? | 2020-12-10 | 2020-12-11 | 19 | 100% | 2020-12-10 | 2020-12-11 |  |  |
| 21 | 2.8 | Prevzem delovnih paketov | 1d? | 2020-12-11 | 2020-12-14 | 20 | 100% | 2020-12-11 | 2020-12-14 |  | Vodja projekta |
| 23 | 3 | **Faze razvoja** | 58.75d? | 2020-12-04 | 2021-02-24 | 7 | 32% | 2020-12-04 | 2021-02-10 | start no earlier than 2020-12-04 |  |
| 24 | 3.1 | **Analiza** | 8d | 2020-12-04 | 2020-12-16 |  | 100% | 2020-12-04 | 2020-12-16 |  |  |
| 25 | 3.1.1 | Določitev in analiza izdelkov | 1d | 2020-12-04 | 2020-12-07 |  | 100% | 2020-12-04 | 2020-12-07 |  |  |
| 26 | 3.1.2 | Analiza kadra | 2d | 2020-12-07 | 2020-12-09 | 25 | 100% | 2020-12-07 | 2020-12-09 |  | Vodja delovnih skupin |
| 27 | 3.1.3 | analiza stroškov | 1d | 2020-12-09 | 2020-12-10 | 26 | 100% | 2020-12-09 | 2020-12-10 |  | Računovodja |
| 28 | 3.1.4 | Analiza zahtev | 2d | 2020-12-10 | 2020-12-14 | 27 | 100% | 2020-12-10 | 2020-12-14 |  | Vodja izvajalcev |
| 29 | 3.1.5 | Izdelava urnika | 2d | 2020-12-14 | 2020-12-16 | 28 | 100% | 2020-12-14 | 2020-12-16 |  | Vodja izvajalcev |

| ID | WBS | Task | Duration | Start | Finish | Predecessors | Complete | Baseline start | Baseline finish | Constraint | Resources |
| --- | --- | --- | --- | --- | --- | --- | --- | --- | --- | --- | --- |
| 30 | 3.2 | **Načrtovanje** | 24.75d | 2020-12-16 | 2021-01-19 | 29 | 47% | 2020-12-16 | 2021-01-04 |  |  |
| 31 | 3.2.1 | Določitev in analiza izdelkov | 1d | 2020-12-16 | 2020-12-17 |  | 100% | 2020-12-16 | 2020-12-17 |  | Vodja izvajalcev |
| 32 | 3.2.2 | Določitev aktivnosti in njihovih odvisnosti | 0.67d | 2020-12-17 | 2020-12-17 | 31 | 100% | 2020-12-17 | 2020-12-17 |  | Vodja delovnih skupin |
| 33 | 3.2.3 | Izdelava urnika | 0.38d | 2020-12-17 | 2020-12-18 | 32 | 100% | 2020-12-17 | 2020-12-18 |  | Programer 1; Vodja oblikovalcev [25%]; Vodja ravoja programske opreme [75%] |
| 34 | 3.2.4 | Oblikovanje uporabniškega vmesnika | 3d | 2020-12-16 | 2020-12-21 |  | 100% | 2020-12-16 | 2020-12-21 |  | Oblikovalec |
| 35 | 3.2.5 | Ustvarjanje UML diagramov | 4d | 2020-12-21 | 2020-12-25 | 34, 33 | 100% | 2020-12-21 | 2020-12-25 |  | Načrtovalec programa |
| 36 | 3.2.6 | Izdelava E-R modela | 5.75d | 2020-12-21 | 2021-01-04 | 34 | 100% | 2020-12-21 | 2020-12-25 |  | Načrtovalec podatkovne baze; Programer 1 [30%] |
| 37 | 3.2.7 | Določanje tehnologij, ki jih bomo uporabili pri izvedbi | 1d | 2020-12-25 | 2020-12-28 | 36 | 100% | 2020-12-25 | 2020-12-28 |  | Vodja projekta |
| 38 | 3.2.8 | Izdelava prototipa | 16.75d | 2020-12-28 | 2021-01-19 | 37 | 30% | 2020-12-28 | 2021-01-04 |  | Programer 1; Programer 2; Oblikovalec |
| 40 | 3.3 | **Implementacija** | 37.75d? | 2021-01-04 | 2021-02-24 | 38 | 4% | 2021-01-04 | 2021-02-10 |  |  |
| 41 | 3.3.1 | Določitev in analiza izdelkov | 1d | 2021-01-04 | 2021-01-05 |  | 100% | 2021-01-04 | 2021-01-05 |  | Vodja delovnih skupin |
| 42 | 3.3.2 | Izdelava urnika | 1d? | 2021-01-05 | 2021-01-06 | 41 | 100% | 2021-01-05 | 2021-01-06 |  | Vodja delovnih skupin |
| 43 | 3.3.3 | Pretvorba E-R diagrama v podatkovno bazo | 2d | 2021-01-20 | 2021-01-21 | 42 |  | 2021-01-06 | 2021-01-08 |  | Programer 1 |
| 44 | 3.3.4 | Priprava strežniškega sistema | 5d | 2021-01-20 | 2021-01-26 | 42 |  | 2021-01-06 | 2021-01-13 |  | Vzdrževalec strojne opreme |
| 45 | 3.3.5 | Pretvorba razrednega diagrama | 5d | 2021-01-20 | 2021-01-26 | 42 |  | 2021-01-06 | 2021-01-13 |  | Programer 2 |
| 46 | 3.3.6 | Izdelava uporabniškega vmesnika | 3d | 2021-01-27 | 2021-01-29 | 45 |  | 2021-01-13 | 2021-01-18 |  | Oblikovalec |
| 47 | 3.3.7 | Programiranje zahtev | 20d | 2021-01-28 | 2021-02-24 | 45 |  | 2021-01-13 | 2021-02-10 | start no earlier than 2021-01-28 | Programer 1; Programer 2 |
| 49 | 4 | **Testiranje** | 3d | 2021-02-25 | 2021-03-01 | 30 |  | 2021-02-10 | 2021-02-15 |  |  |
| 50 | 4.1 | Testiranje primerov uporabe | 3d | 2021-02-25 | 2021-03-01 | 47 |  | 2021-02-10 | 2021-02-15 |  |  |
| 51 | 4.2 | Testiranje podakovne baze | 2d | 2021-02-25 | 2021-02-26 | 47 |  | 2021-02-10 | 2021-02-12 |  |  |
| 52 | 4.3 | Testiranje varnosti | 2d | 2021-02-25 | 2021-02-26 | 47 |  | 2021-02-10 | 2021-02-12 |  |  |
| 54 | 5 | **Zaključitev projekta** | 2.67d | 2021-02-25 | 2021-03-01 | 23 |  | 2021-02-10 | 2021-02-12 |  |  |
| 55 | 5.1 | Priprava planiranega zaprtja | 1d | 2021-02-25 | 2021-02-25 |  |  | 2021-02-10 | 2021-02-11 |  | Vodja projekta |
| 56 | 5.2 | predaja izdelka | 1d | 2021-02-26 | 2021-02-26 | 55 |  | 2021-02-11 | 2021-02-12 |  | Direktor |
| 57 | 5.3 | Ocena izdelka | 0.67d | 2021-03-01 | 2021-03-01 | 56 |  | 2021-02-12 | 2021-02-12 |  | Direktor; Vodja uporabnikov; Vodja projekta |

Notes:
- 40: T1 - Nerealna pričakovanja stranke T2 - Pomanjkanje programerjev T3 - Pomanjkanje strojne opreme T4 - Nejasna navodila stranke T7 - Zdravstvena odotnost kadra
- 49: T6 - Varnostne luknje v aplikaciji
- 54: T5 - Vremenski pojav uniči vas T8 - Slabo sprejetje aplikacije T9 - Aplikacija pod pričakovanji stranke

| ID | WBS | Task | Duration | Start | Finish | Baseline start | Baseline finish | Resources |
| --- | --- | --- | --- | --- | --- | --- | --- | --- |
| 60 | 6 | **Komunikacijski dogodki** | 0.5d | 2020-11-24 | 2020-11-24 | 2020-11-24 | 2020-11-24 |  |
| 61 | 6.1 | dnevni sestnaek | 0.12d | 2020-11-24 | 2020-11-24 | 2020-11-24 | 2020-11-24 | Vodja izvajalcev; Direktor; Vodja uporabnikov; Vodja projekta; Oglaševalec; Kadrovnik; Svetovalec za odnose z javnostjo; Tajnik; Vzdrževalec strojne opreme; Vodja oblikovalcev; Vodja ravoja programske opreme; Programer 1; Programer 2; Oblikovalec; Načrtovalec uporabniškega vmesnika; Tester; Načrtovalec podatkovne baze; Vodja delovnih skupin; Računovodja; Načrtovalec programa |
| 62 | 6.2 | sestanek s stranko o napredku izdelka in novih zahtevah | 0.25d | 2020-11-24 | 2020-11-24 | 2020-11-24 | 2020-11-24 | Vodja projekta |
| 63 | 6.3 | Brainstorming | 0.19d | 2020-11-24 | 2020-11-24 | 2020-11-24 | 2020-11-24 |  |
| 64 | 6.4 | Predstavitev prototipa stranki | 0.5d | 2020-11-24 | 2020-11-24 | 2020-11-24 | 2020-11-24 |  |
| 65 | 6.5 | Sestanek z računovodjo | 0.25d | 2020-11-24 | 2020-11-24 | 2020-11-24 | 2020-11-24 |  |
| 66 | 6.6 | Sestanek vodje projekta z vodjo delovnih skupin | 0.38d | 2020-11-24 | 2020-11-24 | 2020-11-24 | 2020-11-24 |  |
| 67 | 6.7 | Četrtletno poročilo | 0.25d | 2020-11-24 | 2020-11-24 | 2020-11-24 | 2020-11-24 |  |
| 68 | 6.8 | Predstavitev končnega izdelka | 0.25d | 2020-11-24 | 2020-11-24 | 2020-11-24 | 2020-11-24 |  |
| 69 | 6.9 | Poročilo testerjev | 0.5d | 2020-11-24 | 2020-11-24 | 2020-11-24 | 2020-11-24 |  |
